# IWB 项目进度

Schedule from a web Gantt chart, 2025-03-05 to 2025-03-05.
Sundays are off

## Schedule

| ID | WBS | Task | Duration | Start | Finish | Complete |
| --- | --- | --- | --- | --- | --- | --- |
| 2 | 1 | **整机样品采购，拆机学习** | 1d | 2025-03-05 | 2025-03-05 | 33% |
| 3 | 1.1 | 55，65，75，86整机采购 | 1d | 2025-03-05 | 2025-03-05 | 100% |
| 4 | 2 | **55，86样品自组装（确认精确BOM，编制SOP）** | 1d | 2025-03-05 | 2025-03-05 |  |
| 5 | 2.1 | 55嘀嗒背光采购 | 1d | 2025-03-05 | 2025-03-05 | 100% |
| 6 | 3 | 86嘀嗒背光采购 | 1d | 2025-03-05 | 2025-03-05 | 50% |
| 7 | 4 | 55型材设计打样（增加摄像头，NFC） | 1d | 2025-03-05 | 2025-03-05 | 50% |
| 8 | 5 | 86型材设计打样（增加NFC) | 1d | 2025-03-05 | 2025-03-05 | 50% |
| 9 | 6 | 55结构件设计打样（五金挡板，转接板等） | 1d | 2025-03-05 | 2025-03-05 | 50% |
| 10 | 7 | 4800摄像头+8阵列 样品采购 | 1d | 2025-03-05 | 2025-03-05 | 100% |
| 11 | 8 | 55 液晶玻璃样品采购 | 1d | 2025-03-05 | 2025-03-05 |  |
| 12 | 9 | 86 液晶玻璃样品采购 | 1d | 2025-03-05 | 2025-03-05 |  |
| 13 | 10 | 主板，电源板，NFC OPS接口 样品采购 | 1d | 2025-03-05 | 2025-03-05 |  |
